Schedule from a web Gantt chart, 2022-07-12 to 2026-01-21.
Saturdays and Sundays are off

## Schedule

| ID | WBS | Task | Duration | Start | Finish | Predecessors | Status | inPeople |
| --- | --- | --- | --- | --- | --- | --- | --- | --- |
| 2 | 1 | **Tasks Dependent on Function Team** | 515d | 2022-07-12 | 2024-07-01 |  |  |  |
| 3 | 1.1 | (User&eBao BA) BSD Signoff | 30d | 2024-01-01 | 2024-02-09 |  |  |  |
| 4 | 1.2 | (eBao AA) Table Design of Customization | 1d | 2024-03-25 | 2024-03-25 | 3FS+30d | waiting |  |
| 5 | 1.3 | (eBao BA&AD) Code/Master Table Configuration | 1d | 2024-04-22 | 2024-04-22 | 3FS+50d | waiting |  |
| 6 | 1.4 | (User&eBao BA) Product Set-up | 1d | 2024-07-01 | 2024-07-01 | 3FS+100d | waiting |  |
| 7 | 1.5 | (User&eBao BA) Product Mappping | 1d | 2024-05-20 | 2024-05-20 | 3FS+70d | waiting |  |
| 8 | 1.6 | (eBao Tester) Function Test's Pass Rate > 80% | 1d | 2022-07-12 | 2022-07-12 |  |  |  |
| 9 | 1.7 | (User) Function UAT | 1d | 2022-07-12 | 2022-07-12 |  |  |  |
| 10 | 2 | **Data Migration** | 477d | 2024-03-26 | 2026-01-21 |  |  |  |
| 11 | 2.1 | **Activity on Baseline Template (clear all DVR and BVR-NonProd issues)** | 350d | 2024-08-01 | 2025-12-03 |  |  |  |
| 12 | 2.1.1 | CHUBB-1 CAPSIL | 140d | 2024-08-01 | 2025-02-12 |  |  | Client=; eBao=0.8 |
| 13 | 2.1.2 | System-6 | 70d | 2025-02-13 | 2025-05-21 | 12 | waiting | Client=; eBao<=0.5 |
| 14 | 2.1.3 | CAPSIL | 70d | 2025-05-22 | 2025-08-27 | 13 | waiting | Client=; eBao<=0.5 |
| 15 | 2.1.4 | IPAS | 70d | 2025-08-28 | 2025-12-03 | 14 | waiting | Client=; eBao<=0.5 |
| 16 | 2.2 | **Requirement Phase** | 15d | 2026-01-01 | 2026-01-21 |  |  |  |
| 17 | 2.2.1 | DM Approach | 1d | 2026-01-01 | 2026-01-01 |  |  |  |
| 18 | 2.2.2 | **Data Migration Scope** | 13d | 2026-01-02 | 2026-01-20 |  |  |  |
| 19 | 2.2.2.1 | Initial Discussion & Draft Version | 2d | 2026-01-02 | 2026-01-05 | 17 | waiting |  |
| 20 | 2.2.2.2 | High-level Solution for Out-of-Scope Items | 10d | 2026-01-06 | 2026-01-19 | 19 | waiting |  |
| 21 | 2.2.2.3 | Scope Sign-off | 1d | 2026-01-20 | 2026-01-20 | 20 | waiting |  |
| 22 | 2.2.3 | DM Plan | 1d | 2026-01-21 | 2026-01-21 | 21 | waiting |  |
| 23 | 2.3 | **Design Phase / Baseline** | 29d | 2024-08-01 | 2024-09-10 |  | waiting |  |
| 24 | 2.3.1 | **Baseline Template & BVR Introduction and Initial Mapping** | 29d | 2024-08-01 | 2024-09-10 |  | waiting |  |
| 25 | 2.3.1.1 | Policy - policy/benefit master | 10d | 2024-08-01 | 2024-08-14 | 12FS-140d | waiting |  |
| 26 | 2.3.1.2 | Party | 3d | 2024-08-15 | 2024-08-19 | 25 | waiting |  |
| 27 | 2.3.1.3 | Policy - policy roles | 3d | 2024-08-20 | 2024-08-22 | 26 | waiting |  |
| 28 | 2.3.1.4 | Policy - others | 3d | 2024-08-23 | 2024-08-27 | 27 | waiting |  |
| 29 | 2.3.1.5 | ILP | 5d | 2024-08-28 | 2024-09-03 | 28 | waiting |  |
| 30 | 2.3.1.6 | Policy Account | 5d | 2024-09-04 | 2024-09-10 | 29 | waiting |  |

| ID | WBS | Task | Duration | Start | Finish | Predecessors | Status |
| --- | --- | --- | --- | --- | --- | --- | --- |
| 31 | 2.4 | **Design Phase / Customization** | 40d | 2024-03-26 | 2024-05-20 |  |  |
| 32 | 2.4.1 | Template Change | 20d | 2024-03-26 | 2024-04-22 | 4 | waiting |
| 33 | 2.4.2 | BVR Enhancement | 20d | 2024-04-23 | 2024-05-20 | 32 | waiting |
| 34 | 2.5 | **(Client IT) Template Data Delivery and Verification** | 175d | 2024-04-30 | 2024-12-30 |  |  |
| 35 | 2.5.1 | Delivery of All Customized Templates | 1d | 2024-04-30 | 2024-04-30 | 32FS+5d | waiting |
| 36 | 2.5.2 | **BVR - Non Product** | 80d | 2024-05-22 | 2024-09-10 |  |  |
| 37 | 2.5.2.1 | Pass Rate of All Customized Templates > 60% | 20d | 2024-05-22 | 2024-06-18 | 35FS+15d | waiting |
| 38 | 2.5.2.2 | Pass Rate of All Customized Templates > 90% | 30d | 2024-06-19 | 2024-07-30 | 37 | waiting |
| 39 | 2.5.2.3 | Pass Rate of All Customized Templates > 98% | 30d | 2024-07-31 | 2024-09-10 | 38 | waiting |
| 40 | 2.5.3 | **BVR - Product** | 130d | 2024-07-02 | 2024-12-30 |  |  |
| 41 | 2.5.3.1 | Pass Rate of All Customized Templates > 60% | 30d | 2024-07-02 | 2024-08-12 | 6 | waiting |
| 42 | 2.5.3.2 | Pass Rate of All Customized Templates > 75% | 25d | 2024-08-13 | 2024-09-16 | 41 | waiting |
| 43 | 2.5.3.3 | Pass Rate of All Customized Templates > 90% | 25d | 2024-09-17 | 2024-10-21 | 42 | waiting |
| 44 | 2.5.3.4 | Pass Rate of All Customized Templates > 98% | 50d | 2024-10-22 | 2024-12-30 | 43 | waiting |
| 45 | 2.6 | **Development Phase / Customization** | 80d | 2024-04-23 | 2024-08-12 |  |  |
| 46 | 2.6.1 | Migration Script | 30d | 2024-04-23 | 2024-06-03 | 32 | waiting |
| 47 | 2.6.2 | BVR Rules | 20d | 2024-06-04 | 2024-07-01 | 46 | waiting |
| 48 | 2.6.3 | **Reconciliation Report** | 30d | 2024-07-02 | 2024-08-12 |  |  |
| 49 | 2.6.3.1 | Collect Re-con Requirement | 10d | 2024-07-02 | 2024-07-15 | 47 | waiting |
| 50 | 2.6.3.2 | Development of Re-con Report | 20d | 2024-07-16 | 2024-08-12 | 49 | waiting |
| 51 | 2.6.4 | DC Development - Trial Run with Real Data | 20d | 2024-06-04 | 2024-07-01 | 46 | waiting |
| 52 | 2.7 | **DM Test at eBao Side** | 155d | 2024-07-02 | 2025-02-03 |  |  |
| 53 | 2.7.1 | Target Data Validation | 30d | 2024-07-02 | 2024-08-12 | 47 | waiting |
| 54 | 2.7.2 | Target Data Reconciliation | 15d | 2024-08-13 | 2024-09-02 | 53 | waiting |

| ID | WBS | Task | Duration | Start | Finish | Predecessors | Status |
| --- | --- | --- | --- | --- | --- | --- | --- |
| 55 | 2.7.3 | **Recalculation Verification** | 70d | 2024-09-17 | 2024-12-23 |  |  |
| 56 | 2.7.3.1 | Pass Rate > 75% | 25d | 2024-09-17 | 2024-10-21 | 42 | waiting |
| 57 | 2.7.3.2 | Pass Rate > 90% | 25d | 2024-10-22 | 2024-11-25 | 56 | waiting |
| 58 | 2.7.3.3 | Pass Rate > 98% | 20d | 2024-11-26 | 2024-12-23 | 57 | waiting |
| 59 | 2.7.4 | Batch Jobs Running on Migrated Data | 30d | 2024-12-24 | 2025-02-03 | 55 | waiting |
| 60 | 2.7.5 | **Function Test on Migrated Data (DVT)** | 70d | 2024-10-22 | 2025-01-27 |  |  |
| 61 | 2.7.5.1 | Function Test (Pass Rate > 70%) | 30d | 2024-10-22 | 2024-12-02 | 56, 8 | waiting |
| 62 | 2.7.5.2 | Functional Test with Migrated Data (Pass Rate > 85%) | 20d | 2024-12-03 | 2024-12-30 | 61 | waiting |
| 63 | 2.7.5.3 | Functional Test with Migrated Data (Pass Rate > 95%) | 20d | 2024-12-31 | 2025-01-27 | 62 | waiting |
| 64 | 2.8 | **DM Test at Client Side** | 130d | 2024-12-03 | 2025-06-02 |  |  |
| 65 | 2.8.1 | (Client BA) Comparison Check on UI | 30d | 2024-12-03 | 2025-01-13 | 61 | waiting |
| 66 | 2.8.2 | (Client BA/IT) Pre DC UAT | 40d | 2025-01-14 | 2025-03-10 | 65 | waiting |
| 67 | 2.8.3 | (Client User) DC UAT | 60d | 2025-03-11 | 2025-06-02 | 63, 66 | waiting |
| 68 | 2.9 | **Go Live** | 17d | 2025-06-03 | 2025-06-25 |  |  |
| 69 | 2.9.1 | Rehearsal for CutOver | 15d | 2025-06-03 | 2025-06-23 | 67 | waiting |
| 70 | 2.9.2 | CutOver | 2d | 2025-06-24 | 2025-06-25 | 69 | waiting |
| 71 | 2.10 | Post-Go-Live Support | 40d | 2025-06-26 | 2025-08-20 | 70 | waiting |
